Schedule from GanttProject, 2013-03-01 to 2013-07-12.

## Calendars

- Project calendar: Mon-Fri working; Sat-Sun off.

## Resources

| Resource |
| --- |
| Björn (SYSTOPIA) |
| Paul (delius) |
| Olaf (SfE) |
| Xavier (TttP) |
| Joe (JMA Consulting) |
| Fabian (SYSTOPIA) |
| Chris (delius) |

## Schedule

| ID | WBS | Task | Duration | Start | Finish | Predecessors | Complete | Resources |
| --- | --- | --- | --- | --- | --- | --- | --- | --- |
| 1 | 1 | **Definition Feature Requirements** | 17d | 2013-04-01 | 2013-04-23 |  | 100% |  |
| 2 | 1.1 | User Stories & required Features SYSTOPIA | 17d | 2013-04-01 | 2013-04-23 |  | 100% |  |
| 3 | 1.2 | User & required Features delius | 17d | 2013-04-01 | 2013-04-23 |  | 100% |  |
| 4 | 1.3 | User & required Features SfE | 17d | 2013-04-01 | 2013-04-23 |  | 100% |  |
| 5 | 2 | **CiviBanking** | 96d | 2013-03-01 | 2013-07-12 |  | 9% |  |
| 6 | 2.1 | **CiviBanking design** | 33d | 2013-03-01 | 2013-04-16 |  |  |  |
| 7 | 2.1.1 | UI design mockups | 12d | 2013-04-01 | 2013-04-16 |  | 100% | Björn (SYSTOPIA) |
| 8 | 2.1.2 | workflow diagrams | 1d | 2013-03-01 | 2013-03-01 |  |  |  |
| 9 | 2.2 | **CiviBanking extension framework** | 41d | 2013-04-17 | 2013-06-12 | 6 | 32% |  |
| 10 | 2.2.1 | CiviBanking extension | 1d | 2013-04-17 | 2013-04-17 |  |  |  |
| 11 | 2.2.2 | CiviBanking data model | 15d | 2013-04-17 | 2013-05-07 |  | 60% | Paul (delius) |
| 12 | 2.2.3 | CiviBanking XML & DAO generation | 3d | 2013-05-22 | 2013-05-24 | 11, 40 |  | Björn (SYSTOPIA) |
| 13 | 2.2.4 | **CiviBanking API** | 15d | 2013-05-23 | 2013-06-12 | 12 |  |  |
| 14 | 2.2.4.1 | accounts API | 3d | 2013-05-31 | 2013-06-04 | 41 |  | Björn (SYSTOPIA); Xavier (TttP) |
| 15 | 2.2.4.2 | payments / statements API | 15d | 2013-05-23 | 2013-06-12 | 41 |  | Björn (SYSTOPIA); Xavier (TttP) |
| 16 | 2.3 | **Payment Importer** | 3d | 2013-06-06 | 2013-06-10 | 9, 43 |  | Björn (SYSTOPIA) |
| 17 | 2.3.1 | Payment Importer plugin architecture | 1d | 2013-06-06 | 2013-06-06 |  |  |  |
| 18 | 2.3.2 | Payment Importer plugin base class | 1d | 2013-06-07 | 2013-06-07 | 17 |  |  |
| 19 | 2.3.3 | **Basic Payment Importer plugins** | 1d | 2013-06-10 | 2013-06-10 | 18 |  |  |
| 20 | 2.3.3.1 | Generic CSV Payment Explorer plugin | 1d | 2013-06-10 | 2013-06-10 |  |  |  |
| 21 | 2.3.3.2 | BE:CODA plugin | 1d | 2013-06-10 | 2013-06-10 |  |  | Paul (delius); Chris (delius) |
| 22 | 2.3.3.3 | DE:format plugin | 1d | 2013-06-10 | 2013-06-10 |  |  |  |
| 23 | 2.4 | BankAccount Manager | 15d | 2013-06-06 | 2013-06-26 | 9, 14 |  | Olaf (SfE) |
| 24 | 2.5 | Payment Manager | 10d | 2013-06-17 | 2013-06-28 | 9 |  | Björn (SYSTOPIA) |
| 25 | 2.6 | Statement Manager | 15d | 2013-06-17 | 2013-07-05 | 9 |  | Björn (SYSTOPIA) |

| ID | WBS | Task | Duration | Start | Finish | Predecessors | Complete | Resources |
| --- | --- | --- | --- | --- | --- | --- | --- | --- |
| 26 | 2.7 | **Matching engine** | 1d | 2013-06-17 | 2013-06-17 | 9 |  | Björn (SYSTOPIA) |
| 27 | 2.7.1 | Matcher plugin architecture | 1d | 2013-06-17 | 2013-06-17 |  |  | Björn (SYSTOPIA) |
| 28 | 2.7.2 | Matcher plugin base class | 1d | 2013-06-17 | 2013-06-17 |  |  |  |
| 29 | 2.8 | Suggestion Workbench | 20d | 2013-06-17 | 2013-07-12 | 9 |  | Björn (SYSTOPIA) |
| 30 | 2.9 | **Payment Exporter** | 3d | 2013-06-17 | 2013-06-19 | 9 |  | Björn (SYSTOPIA) |
| 31 | 2.9.1 | Payment Exporter plugin architecture | 1d | 2013-06-17 | 2013-06-17 |  |  |  |
| 32 | 2.9.2 | Payment Exporter plugin base class | 1d | 2013-06-18 | 2013-06-18 | 31 |  |  |
| 33 | 2.9.3 | **Basic Payment Exporter plugins** | 1d | 2013-06-19 | 2013-06-19 | 32 |  |  |
| 34 | 2.9.3.1 | Generic CSV Payment Exporter plugin | 1d | 2013-06-19 | 2013-06-19 |  |  |  |
| 35 | 3 | **CiviSDD** | 51d | 2013-05-01 | 2013-07-10 |  | 22% |  |
| 36 | 3.1 | **CiviSDD design** | 5d | 2013-05-01 | 2013-05-07 |  |  |  |
| 37 | 3.1.1 | Workflow diagrams | 5d | 2013-05-01 | 2013-05-07 |  |  |  |
| 38 | 3.2 | **CiviSDD extension framework** | 12d | 2013-05-14 | 2013-05-29 | 36 | 64% |  |
| 39 | 3.2.1 | CiviSDD extension | 1d | 2013-05-14 | 2013-05-14 |  |  |  |
| 40 | 3.2.2 | CiviSDD data model | 5d | 2013-05-15 | 2013-05-21 | 39 | 70% | Paul (delius) |
| 41 | 3.2.3 | CiviSDD XML & DAO generation | 5d | 2013-05-22 | 2013-05-28 | 40 | 80% | Xavier (TttP) |
| 42 | 3.2.4 | **CiviSDD API** | 1d | 2013-05-29 | 2013-05-29 | 41 |  |  |
| 43 | 3.2.4.1 | SEPA API (mandates, transactions, modes...) | 1d | 2013-05-29 | 2013-05-29 |  |  | Olaf (SfE) |
| 44 | 3.2.5 | CiviSDDLogic class | 1d | 2013-05-22 | 2013-05-22 | 40 |  |  |
| 45 | 3.3 | Mandate Manager | 15d | 2013-05-23 | 2013-06-12 | 38 |  | Olaf (SfE) |
| 46 | 3.4 | **SDD Payment Processor** | 20d | 2013-06-13 | 2013-07-10 | 38 |  |  |
| 47 | 3.4.1 | SDD Payment Processor basics | 10d | 2013-06-13 | 2013-06-26 | 43, 45 |  | Olaf (SfE) |
| 48 | 3.4.2 | finish SDD Payment Processor | 10d | 2013-06-27 | 2013-07-10 | 47, 52 |  | Olaf (SfE) |
| 49 | 3.5 | Batch Manager | 13d | 2013-05-23 | 2013-06-10 | 38 |  | Olaf (SfE) |
| 50 | 3.6 | XML Exporter | 5d | 2013-06-11 | 2013-06-17 | 49 |  | Paul (delius); Olaf (SfE) |
| 51 | 3.7 | Mandate Documenter | 10d | 2013-06-13 | 2013-06-26 | 45 |  | Olaf (SfE) |
| 52 | 3.8 | Mandate Importer | 10d | 2013-06-13 | 2013-06-26 | 45 |  | Olaf (SfE) |
| 53 | 4 | Code Sprint | 2d | 2013-05-29 | 2013-05-30 |  |  |  |
| 54 | 5 | automate pre-notification | 10d | 2013-06-26 | 2013-07-09 |  |  |  |
